# ProyectoPrueba

Schedule from MS Project, 2019-05-03 to 2019-08-09, costs in $.

## Calendars

- Estándar: Mon-Fri 09:00-13:00, 15:00-19:00; Sat-Sun off.

## Resources

| Resource | Rate | Cost per use |
| --- | --- | --- |
| Cliente |  |  |
| Líder | 145.95 |  |
| Analista | 111.5 |  |
| Programador | 129.9 |  |
| Encargado de Pruebas | 133.12 |  |
| Administrador | 111.83 |  |
| Diseñador Gráfico | 114.21 |  |
| Documentador | 116.01 |  |
| Diseñador de la Base de Datos | 134.37 |  |
| Laptop HP |  | 250 |
| Laptop Lenovo |  | 104 |
| Laptop Dell |  | 312.5 |
| Laptop HP |  | 208.3 |
| Papelería |  | 300 |
| Ratón HP |  | 7.2 |
| Impresora |  | 72.9 |
| Transporte |  | 80 |
| Comida |  | 200 |
| Electricidad |  | 120 |
| Licencia de project |  | 8.3 |
| Licencia de office |  | 27 |
| Internet |  | 11.6 |
| Licencia de visio |  | 13.5 |

## Schedule

| ID | WBS | Task | Type | Duration | Start | Finish | Predecessors | Total slack | Resources | Work | Cost |
| --- | --- | --- | --- | --- | --- | --- | --- | --- | --- | --- | --- |
| 1 | 1 | **Proyecto Aplicación web "Mueblería Casa Morales"** |  | 71d | 2019-05-03 | 2019-08-09 |  |  |  | 1736h | 226,315.88 |
| 2 | 1.1 | **Planificación/Entendimiento del negocio** |  | 11d | 2019-05-03 | 2019-05-17 |  | 0d |  | 192h | 24,364.44 |
| 3 | 1.1.1 | Entendimiento del negocio | manual | 3d | 2019-05-03 | 2019-05-07 |  |  | Analista; Líder; Papelería; Transporte; Cliente; Comida | 72h | 6,758.8 |
| 4 | 1.1.2 | Definir el protocolo de entrega con el cliente | manual | 1d | 2019-05-08 | 2019-05-08 | 3 |  | Líder; Cliente; Comida; Papelería; Transporte | 16h | 1,747.6 |
| 5 | 1.1.3 | Definir ciclo y actividades con base a la descripción del proyecto | manual | 4d | 2019-05-09 | 2019-05-14 | 4 |  | Líder; Laptop HP; Licencia de office; Licencia de project; Papelería; Ratón HP; Internet | 32h | 5,274.5 |
| 6 | 1.1.4 | Determinar tiempo estimado para cada actividad | manual | 3d | 2019-05-10 | 2019-05-14 | 5FF |  | Analista; Documentador; Internet; Laptop Dell; Licencia de office; Licencia de project | 48h | 5,819.64 |
| 7 | 1.1.5 | Establecer equipo de trabajo | manual | 1d | 2019-05-15 | 2019-05-15 | 5, 6 |  | Líder; Internet; Laptop HP; Licencia de office; Ratón HP; Licencia de project | 8h | 1,471.7 |
| 8 | 1.1.6 | Establecer calendario de actividades | manual | 1d | 2019-05-16 | 2019-05-16 | 7 |  | Líder; Internet; Laptop HP; Licencia de office; Licencia de project; Ratón HP | 8h | 1,471.7 |
| 9 | 1.1.7 | Formalizar el inicio de un nuevo ciclo del proyecto | manual | 1d | 2019-05-17 | 2019-05-17 | 3, 4, 5, 6, 7, 8 |  | Líder | 8h | 1,167.6 |
| 10 | 1.1.8 | Hito "Firma de inicio de un nuevo proyecto" | milestone, manual | 0d | 2019-05-17 | 2019-05-17 |  |  | Cliente; Líder; Comida; Transporte; Impresora; Papelería |  | 652.9 |
| 11 | 1.2 | **Definición de requerimientos** |  | 15d | 2019-05-20 | 2019-06-07 |  |  |  | 336h | 42,174.54 |
| 12 | 1.2.1 | Análisis del problema | manual | 5d | 2019-05-20 | 2019-05-24 |  |  | Cliente; Líder; Papelería [200%]; Comida [200%]; Impresora; Transporte | 80h | 6,490.9 |
| 13 | 1.2.2 | Recopilar información | manual | 3d | 2019-05-22 | 2019-05-24 | 12FF |  | Líder; Papelería; Comida; Transporte | 24h | 4,082.8 |
| 14 | 1.2.3 | Identificación de requerimientos | manual | 4d | 2019-05-27 | 2019-05-30 | 12, 13 |  | Analista; Laptop HP [200%]; Papelería; Licencia de office [200%]; Electricidad [200%]; Internet | 32h | 4,276.6 |
| 15 | 1.2.4 | Identificación de restricciones del sistema a desarrollar | manual | 3d | 2019-05-28 | 2019-05-30 | 14FF |  | Administrador; Laptop HP [200%]; Papelería; Licencia de office [200%]; Electricidad [200%]; Internet; Ratón HP | 24h | 3,399.72 |
| 16 | 1.2.5 | Análisis de los requerimientos | manual | 3d | 2019-05-31 | 2019-06-04 | 15, 14 |  | Analista; Laptop HP; Licencia de office; Electricidad; Impresora | 24h | 3,145.9 |
| 17 | 1.2.6 | Representación de los requerimientos | manual | 2d | 2019-06-03 | 2019-06-04 | 16FF |  | Laptop HP [200%]; Licencia de office [200%]; Electricidad [200%]; Internet; Administrador | 16h | 2,197.88 |
| 18 | 1.2.7 | Comunicación de los requerimientos | manual | 1d | 2019-06-05 | 2019-06-05 | 17 |  | Administrador; Laptop HP [200%]; Papelería; Licencia de office [200%]; Electricidad [200%]; Internet; Ratón HP | 8h | 1,610.44 |
| 19 | 1.2.8 | Validación de requerimientos | manual | 1d | 2019-06-06 | 2019-06-06 | 18FF |  | Líder; Laptop HP [200%]; Licencia de office; Electricidad [200%]; Internet; Ratón HP | 8h | 1,583.4 |
| 20 | 1.2.9 | Generación del SRS | manual | 15d | 2019-05-20 | 2019-06-07 |  |  | Documentador; Laptop Dell [200%]; Licencia de office; Electricidad [200%]; Impresora; Internet | 120h | 14,465.2 |
| 21 | 1.2.10 | Hito "Firma del SRS" | milestone, manual | 0d | 2019-06-07 | 2019-06-07 |  |  | Analista; Cliente; Líder; Comida; Impresora; Laptop HP; Papelería; Ratón HP; Transporte; Internet |  | 921.7 |
| 22 | 1.3 | **Diseño funcional** |  | 7d | 2019-06-10 | 2019-06-18 |  |  |  | 80h | 13,563.12 |
| 23 | 1.3.1 | Definir la estructura del producto | manual | 1d | 2019-06-10 | 2019-06-10 |  |  | Diseñador Gráfico; Laptop HP; Licencia de office; Electricidad; Internet | 8h | 1,322.28 |
| 24 | 1.3.2 | Definir el funcionamiento del producto | manual | 3d | 2019-06-11 | 2019-06-13 | 23FF |  | Diseñador Gráfico; Laptop HP; Licencia de office; Electricidad; Internet | 24h | 3,149.64 |
| 25 | 1.3.3 | Definir las pantallas del producto | manual | 2d | 2019-06-12 | 2019-06-13 | 24FF |  | Líder; Laptop HP; Licencia de office; Electricidad; Internet | 16h | 2,743.8 |
| 26 | 1.3.4 | Definir los servicios y funcionalidades | manual | 2d | 2019-06-12 | 2019-06-13 | 25FF |  | Líder; Laptop HP; Licencia de office; Electricidad; Internet | 16h | 2,743.8 |
| 27 | 1.3.5 | Generar mapa de navegación | manual | 1d | 2019-06-14 | 2019-06-14 | 25, 26 |  | Analista; Laptop HP; Licencia de visio; Electricidad; Internet | 8h | 1,287.1 |
| 28 | 1.3.6 | Crear el prototipo de alto nivel | manual | 1d | 2019-06-14 | 2019-06-14 | 27FF |  | Programador; Laptop Lenovo; Electricidad; Internet | 8h | 1,274.8 |
| 29 | 1.3.7 | Hito "Firma de acuerdo con el diseño funcional" | milestone, manual | 0d | 2019-06-14 | 2019-06-14 |  |  | Analista; Cliente; Comida; Documentador; Electricidad; Impresora; Internet; Laptop HP; Líder; Papelería; Ratón HP; Transporte |  | 1,041.7 |

| ID | WBS | Task | Type | Duration | Start | Finish | Predecessors | Resources | Work | Cost |
| --- | --- | --- | --- | --- | --- | --- | --- | --- | --- | --- |
| 30 | 1.4 | **Diseño técnico** |  | 10d | 2019-06-17 | 2019-06-28 |  |  | 256h | 36,085.42 |
| 31 | 1.4.1 | Diseño de diagramas de clases | manual | 3d | 2019-06-17 | 2019-06-19 |  | Programador; Electricidad [200%]; Internet [200%]; Laptop Lenovo [200%]; Licencia de visio [200%] | 24h | 3,366.7 |
| 32 | 1.4.2 | Generar el diagrama E-R | manual | 2d | 2019-06-18 | 2019-06-19 | 31FF | Diseñador de la Base de Datos; Electricidad [200%]; Internet [200%]; Laptop Lenovo [200%]; Licencia de visio [200%] | 16h | 2,399.02 |
| 33 | 1.4.3 | Validar el diagrama E-R | manual | 2d | 2019-06-20 | 2019-06-21 | 32 | Diseñador de la Base de Datos; Electricidad [200%]; Internet [200%]; Laptop Lenovo [200%]; Licencia de visio [200%]; Líder | 32h | 4,734.22 |
| 34 | 1.4.4 | Transformar al diagrama relacional | manual | 1d | 2019-06-21 | 2019-06-21 | 33FF | Diseñador de la Base de Datos; Electricidad [200%]; Internet [200%]; Laptop Lenovo [200%]; Licencia de visio [200%] | 8h | 1,324.06 |
| 35 | 1.4.5 | Codificar las pantallas | manual | 3d | 2019-06-24 | 2019-06-26 |  | Programador; Electricidad [200%]; Internet [200%]; Laptop Lenovo [200%] | 24h | 3,353.2 |
| 36 | 1.4.6 | Validar entradas de datos | manual | 3d | 2019-06-24 | 2019-06-26 | 35FF | Encargado de Pruebas; Electricidad [200%]; Internet [200%]; Laptop Dell [200%]; Licencia de office [200%]; Licencia de visio [200%] | 24h | 3,679.48 |
| 37 | 1.4.7 | Generar ejemplos de reportes | manual | 2d | 2019-06-25 | 2019-06-26 | 36FF | Documentador; Electricidad [200%]; Impresora [200%]; Internet [200%]; Laptop Dell [200%]; Licencia de office [200%]; Licencia de visio [200%]; Papelería [200%] | 16h | 2,713.66 |
| 38 | 1.4.8 | Validar reportes | manual | 2d | 2019-06-27 | 2019-06-28 | 36, 37 | Administrador; Electricidad [200%]; Internet [200%]; Laptop HP [200%]; Licencia de office [200%]; Ratón HP [200%] | 16h | 2,205.08 |
| 39 | 1.4.9 | Generar documento de especificación de diseño funcional y técnico | manual | 10d | 2019-06-17 | 2019-06-28 | 38FF | Documentador; Electricidad; Impresora; Internet; Laptop Dell; Licencia de office; Papelería | 80h | 10,124.8 |
| 40 | 1.4.10 | Hito "Validación y firma del SDS" | manual | 1d | 2019-06-28 | 2019-06-28 |  | Cliente; Líder; Comida; Electricidad; Internet; Laptop HP; Licencia de office; Licencia de project; Licencia de visio; Papelería; Ratón HP; Transporte | 16h | 2,185.2 |
| 41 | 1.5 | **Código** |  | 20d | 2019-07-01 | 2019-07-26 |  |  | 216h | 32,416.02 |
| 42 | 1.5.1 | Programar funcionalidades de la base de datos | manual | 5d | 2019-07-01 | 2019-07-05 |  | Diseñador de la Base de Datos; Electricidad [200%]; Internet [200%]; Laptop Lenovo [200%] | 32h | 4,535.44 |
| 43 | 1.5.2 | Programar el módulo 1 | manual | 4d | 2019-07-02 | 2019-07-05 | 42FF | Diseñador de la Base de Datos; Programador; Electricidad [300%]; Internet [300%]; Laptop Lenovo [300%]; Licencia de office [200%]; Licencia de visio | 48h | 6,618.58 |
| 44 | 1.5.3 | Pruebas unitarias | manual | 1d | 2019-07-05 | 2019-07-05 |  | Encargado de Pruebas; Electricidad [200%]; Internet [200%]; Laptop Dell [200%]; Licencia de office [200%]; Licencia de visio [200%] | 8h | 1,549.56 |
| 45 | 1.5.4 | Programar el módulo 2 | manual | 4d | 2019-07-08 | 2019-07-11 |  | Programador; Electricidad [200%]; Internet [200%]; Laptop Lenovo [200%]; Licencia de office [200%]; Licencia de visio [200%] | 32h | 4,432.9 |
| 46 | 1.5.5 | Pruebas unitarias | manual | 3d | 2019-07-10 | 2019-07-12 | 44FF | Encargado de Pruebas; Electricidad [200%]; Internet [200%]; Laptop Dell [200%]; Licencia de office [200%]; Licencia de visio [200%] | 24h | 3,679.48 |
| 47 | 1.5.6 | Programar el módulo 3 | manual | 4d | 2019-07-15 | 2019-07-18 |  | Programador; Electricidad [200%]; Internet [200%]; Laptop Lenovo [200%]; Licencia de visio [200%]; Licencia de office [200%] | 32h | 4,432.9 |
| 48 | 1.5.7 | Pruebas unitarias | manual | 3d | 2019-07-16 | 2019-07-18 | 47FF | Encargado de Pruebas; Electricidad [200%]; Internet [200%]; Laptop Dell [200%]; Licencia de office [200%]; Licencia de visio [200%] | 24h | 3,679.48 |
| 49 | 1.5.8 | Programar el módulo 4 | manual | 4d | 2019-07-22 | 2019-07-25 |  |  |  |  |
| 50 | 1.5.9 | Pruebas unitarias | manual | 2d | 2019-07-24 | 2019-07-25 |  |  |  |  |
| 51 | 1.5.10 | Validación contra diseño y funcionalidad | manual | 1d | 2019-07-26 | 2019-07-26 | 44, 46, 48, 50 | Diseñador Gráfico; Líder; Electricidad [200%]; Internet [200%]; Laptop HP [200%]; Licencia de office [200%]; Licencia de project [200%]; Licencia de visio [200%]; Ratón HP [200%] | 16h | 2,518.88 |
| 52 | 1.5.11 | Hito "Validación contra diseño y funcionalidad" | milestone, manual | 0d | 2019-07-26 | 2019-07-26 |  | Cliente; Comida; Electricidad; Internet; Laptop HP; Líder; Papelería; Ratón HP; Transporte |  | 968.8 |
| 53 | 1.6 | **Pruebas** |  | 10d | 2019-07-29 | 2019-08-09 |  |  | 160h | 22,890.98 |
| 54 | 1.6.1 | Subir módulos a servidor de pruebas | manual | 3d | 2019-07-29 | 2019-07-31 |  | Administrador; Electricidad [200%]; Internet [200%]; Laptop HP [200%]; Ratón HP [200%] | 24h | 3,072.72 |
| 55 | 1.6.2 | Pruebas de componentes | manual | 2d | 2019-07-30 | 2019-07-31 | 54FF | Encargado de Pruebas; Electricidad [200%]; Internet [200%]; Laptop Dell [200%]; Licencia de office [200%] | 16h | 2,601.02 |
| 56 | 1.6.3 | Pruebas de integración de software | manual | 2d | 2019-08-01 | 2019-08-02 | 54, 55 | Encargado de Pruebas; Electricidad [200%]; Internet [200%]; Laptop Dell [200%]; Licencia de office [200%] | 16h | 2,601.02 |
| 57 | 1.6.4 | Pruebas de aceptación | manual | 1d | 2019-08-02 | 2019-08-02 | 55, 56FF | Encargado de Pruebas; Líder; Electricidad [200%]; Internet [200%]; Laptop Dell [200%]; Laptop HP [200%]; Licencia de office [200%]; Licencia de project [200%]; Licencia de visio [200%]; Ratón HP [200%] | 16h | 2,982.66 |
| 58 | 1.6.5 | Subir software a sistema a servidor de producción | manual | 3d | 2019-08-05 | 2019-08-07 | 57 | Administrador; Electricidad; Internet; Laptop HP; Licencia de office; Ratón HP | 24h | 3,099.72 |
| 59 | 1.6.6 | Pruebas de estrés | manual | 2d | 2019-08-06 | 2019-08-07 | 58FF | Cliente; Encargado de Pruebas; Electricidad [200%]; Internet [200%]; Laptop Dell [200%]; Licencia de office [200%] | 32h | 2,601.02 |
| 60 | 1.6.7 | Pruebas de aceptación | manual | 2d | 2019-08-08 | 2019-08-09 |  | Líder; Encargado de Pruebas; Electricidad [200%]; Internet [200%]; Laptop Dell [200%]; Laptop HP [200%]; Licencia de office [200%]; Licencia de project [200%]; Licencia de visio [200%]; Ratón HP [200%] | 32h | 5,215.22 |
| 61 | 1.6.8 | Entrega del producto final | manual | 1d | 2019-08-09 | 2019-08-09 | 60FF |  |  |  |
| 62 | 1.6.9 | Hito "Producto final implementado en la empresa" | milestone, manual | 0d | 2019-08-09 | 2019-08-09 |  | Cliente; Líder; Comida; Electricidad; Internet; Laptop HP; Licencia de office; Licencia de project; Licencia de visio; Ratón HP; Transporte |  | 717.6 |

| ID | WBS | Task | Type | Duration | Start | Finish | Constraint | Resources | Work | Cost |
| --- | --- | --- | --- | --- | --- | --- | --- | --- | --- | --- |
| 63 | 1.7 | **Reunión con clientes** |  | 71d | 2019-05-03 | 2019-08-09 |  |  | 496h | 54,821.36 |
| 64 | 1.7.1 | Reunión con clientes 1 | manual | 1d | 2019-05-03 | 2019-05-03 | start no earlier than 2019-05-03 | Analista; Cliente; Líder | 24h | 2,059.6 |
| 65 | 1.7.2 | Reunión con clientes 2 | manual | 1d | 2019-05-10 | 2019-05-10 | start no earlier than 2019-05-10 | Líder; Analista; Documentador; Administrador | 32h | 3,882.32 |
| 66 | 1.7.3 | Reunión con clientes 3 | manual | 1d | 2019-05-17 | 2019-05-17 | start no earlier than 2019-05-17 | Cliente; Líder | 16h | 1,167.6 |
| 67 | 1.7.4 | Reunión con clientes 4 | manual | 1d | 2019-05-24 | 2019-05-24 | start no earlier than 2019-05-24 | Cliente; Líder; Administrador; Analista; Documentador; Internet | 40h | 3,893.92 |
| 68 | 1.7.5 | Reunión con clientes 5 | manual | 1d | 2019-05-31 | 2019-05-31 | start no earlier than 2019-05-31 | Administrador; Analista; Documentador; Líder; Cliente | 40h | 3,882.32 |
| 69 | 1.7.6 | Reunión con clientes 6 | manual | 1d | 2019-06-07 | 2019-06-07 | start no earlier than 2019-06-07 | Analista; Cliente; Líder | 24h | 2,059.6 |
| 70 | 1.7.7 | Reunión con clientes 7 | manual | 1d | 2019-06-14 | 2019-06-14 | start no earlier than 2019-06-14 | Administrador; Analista; Diseñador Gráfico; Documentador; Líder | 40h | 4,796 |
| 71 | 1.7.8 | Reunión con clientes 8 | manual | 1d | 2019-06-21 | 2019-06-21 | start no earlier than 2019-06-21 | Analista; Documentador; Líder; Administrador; Diseñador de la Base de Datos; Diseñador Gráfico; Programador | 56h | 6,910.16 |
| 72 | 1.7.9 | Reunión con clientes 9 | manual | 1d | 2019-06-28 | 2019-06-28 | start no earlier than 2019-06-28 | Cliente; Líder | 16h | 1,167.6 |
| 73 | 1.7.10 | Reunión con clientes 10 | manual | 1d | 2019-07-05 | 2019-07-05 | start no earlier than 2019-07-05 | Diseñador de la Base de Datos; Encargado de Pruebas; Líder; Programador; Administrador | 40h | 5,241.36 |
| 74 | 1.7.11 | Reunión con clientes 11 | manual | 1d | 2019-07-12 | 2019-07-12 | start no earlier than 2019-07-12 | Diseñador de la Base de Datos; Encargado de Pruebas; Líder; Programador; Administrador | 40h | 5,241.36 |
| 75 | 1.7.12 | Reunión con clientes 12 | manual | 1d | 2019-07-19 | 2019-07-19 | start no earlier than 2019-07-19 | Líder; Administrador; Diseñador de la Base de Datos; Encargado de Pruebas; Programador | 40h | 5,241.36 |
| 76 | 1.7.13 | Reunión con clientes 13 | manual | 1d | 2019-07-26 | 2019-07-26 | start no earlier than 2019-07-26 | Líder; Cliente | 16h | 1,167.6 |
| 77 | 1.7.14 | Reunión con clientes 14 | manual | 1d | 2019-08-02 | 2019-08-02 | start no earlier than 2019-08-02 | Administrador; Documentador; Encargado de Pruebas; Líder | 32h | 4,055.28 |
| 78 | 1.7.15 | Reunión con clientes 15 | manual | 1d | 2019-08-09 | 2019-08-09 | start no earlier than 2019-08-09 | Administrador; Cliente; Documentador; Encargado de Pruebas; Líder | 40h | 4,055.28 |
